Schedule from MS Project, 2021-02-05 to 2021-07-02, costs in €.

## Calendars

- standardItaly: Mon-Fri 08:00-12:00, 13:00-17:00; Sat-Sun off. Exceptions (off unless hours are given): 2021-04-05 (lunedi di pasqua), 2021-04-25 (liberazione italia), 2021-05-01 (festa del lavoro), 2021-05-24 (lunedi di pentecoste), 2021-06-02 (festa della Repubblica).

## Resources

| Resource | Group | Rate |
| --- | --- | --- |
| Project Manager | HW Analytics | 80 |
| Data Scientist | HW Analytics | 60 |
| Developer | HW Analytics | 40 |
| Account Manager | HW Analytics | 70 |
| System Administrator | HW Analytics | 30 |
| Lawyer | HW Analytics | 100 |
| Data Administrator | Spotify | 50 |
| Business Contact | Spotify | 50 |
| CTO | Spotify | 100 |
| Data Management Analyst | Spotify | 70 |
| Twitter API license |  | 15.62 |
| PCR Test |  | 150 |
| Consultant |  |  |

## Schedule

| ID | WBS | Task | Type | Duration | Start | Finish | Predecessors | Total slack | Free slack | Constraint | Resources | Work | Cost |
| --- | --- | --- | --- | --- | --- | --- | --- | --- | --- | --- | --- | --- | --- |
| 1 | 1 | Project Kick-Off | milestone | 0d | 2021-02-05 | 2021-02-05 |  | 0d |  |  |  |  |  |
| 2 | 2 | **Business Understanding** |  | 16d | 2021-02-05 | 2021-02-26 | 1 | 0d |  |  |  | 246.4h | 18,932 |
| 3 | 2.1 | Travel to Stockholm |  | 1d | 2021-02-05 | 2021-02-05 |  | 0d |  |  | Project Manager [40%]; Account Manager; Lawyer [50%]; PCR Test [300%] | 15.2h | 1,586 |
| 4 | 2.2 | Set Objectives / Goals |  | 2d | 2021-02-08 | 2021-02-09 | 3 | 0d |  |  | Project Manager [40%]; Account Manager; Lawyer [50%]; Business Contact [50%]; Data Management Analyst [50%] | 34.4h | 2,432 |
| 5 | 2.3 | Define Success Criteria |  | 2d | 2021-02-10 | 2021-02-11 | 4 | 0d |  |  | Project Manager [40%]; Account Manager; Lawyer [50%]; Business Contact [50%]; Data Management Analyst [50%] | 34.4h | 2,432 |
| 6 | 2.4 | Clarify GDPR Situation |  | 1d | 2021-02-12 | 2021-02-12 | 5 | 0d |  |  | Project Manager [40%]; Lawyer [50%] | 7.2h | 656 |
| 7 | 2.5 | List Requirements, Assumptions and Constraints |  | 2d | 2021-02-12 | 2021-02-15 | 6SS | 0d |  |  | Project Manager [40%]; Account Manager; Lawyer [50%]; Business Contact [50%]; Data Management Analyst [50%] | 34.4h | 2,432 |
| 8 | 2.6 | Analyze costs and benefits |  | 2d | 2021-02-16 | 2021-02-17 | 7 | 0d |  |  | Project Manager [40%]; Account Manager; Lawyer [50%]; Business Contact [50%]; Data Management Analyst [50%] | 26.4h | 1,952 |
| 9 | 2.7 | Produce a Project Plan |  | 6d | 2021-02-18 | 2021-02-25 | 8 | 0d |  |  | Project Manager [40%]; Account Manager; Lawyer [50%]; Business Contact [50%]; Data Management Analyst [50%] | 79.2h | 5,856 |
| 10 | 2.8 | Return to Bolzano |  | 1d | 2021-02-26 | 2021-02-26 | 9 | 0d |  |  | Project Manager [40%]; Account Manager; Lawyer [50%]; PCR Test [300%] | 15.2h | 1,586 |
| 11 | 3 | Business Understanding concluded | milestone | 0d | 2021-02-26 | 2021-02-26 | 2 | 0d |  |  |  |  |  |
| 12 | 4 | **Data Understanding** |  | 18d | 2021-03-01 | 2021-03-24 | 11 | 0d |  |  |  | 232h | 12,000 |
| 13 | 4.1 | Set up Twitter Dev Account |  | 1d | 2021-03-01 | 2021-03-01 |  | 0d |  | start no earlier than 2021-03-01 | Data Scientist; System Administrator [50%] | 12h | 600 |
| 14 | 4.2 | Scrape Data |  | 15d | 2021-03-01 | 2021-03-19 | 13SS | 0d |  |  | Data Scientist; System Administrator [50%] | 180h | 9,000 |
| 15 | 4.3 | Explore Data |  | 3d | 2021-03-22 | 2021-03-24 | 14 | 0d |  |  | Data Scientist | 24h | 1,440 |
| 16 | 4.4 | Verify Data Quality |  | 2d | 2021-03-23 | 2021-03-24 | 15FF | 0d |  | finish no later than 2021-03-24 | Data Scientist | 16h | 960 |
| 17 | 5 | Data Understanding Concluded | milestone | 0d | 2021-03-24 | 2021-03-24 | 12 | 20d | 0d |  |  |  |  |
| 18 | 6 | **Data Preparation** |  | 11d | 2021-03-25 | 2021-04-09 | 17 | 19d | 0d |  |  | 100h | 15,600 |
| 19 | 6.1 | Select Data |  | 2d | 2021-03-25 | 2021-03-26 |  | 20d | 0d |  | Data Scientist; Consultant [0.1%] | 16h | 10,960 |
| 20 | 6.2 | Clean Data |  | 3d | 2021-03-29 | 2021-03-31 | 19 | 20d | 0d |  | Data Scientist | 24h | 1,440 |
| 21 | 6.3 | Format Data |  | 6d | 2021-04-01 | 2021-04-09 | 20 | 19d |  |  | Data Scientist; Developer [50%] | 60h | 3,200 |
| 22 | 7 | Data Preparation done | milestone | 0d | 2021-04-09 | 2021-04-09 | 18 | 19d | 0d |  |  |  |  |
| 23 | 8 | **Modeling** |  | 19d | 2021-04-09 | 2021-05-06 | 22 | 19d | 0d |  |  | 424h | 25,440 |
| 24 | 8.1 | **Create Model for Brand Monitoring** |  | 19d | 2021-04-12 | 2021-05-06 |  | 19d |  |  |  | 152h | 9,120 |
| 25 | 8.1.1 | Select Modeling Techniques |  | 6d | 2021-04-12 | 2021-04-19 |  | 19d | 0d |  | Data Scientist | 48h | 2,880 |
| 26 | 8.1.2 | Generate Test Design |  | 5d | 2021-04-20 | 2021-04-26 | 25 | 19d | 0d |  | Data Scientist | 40h | 2,400 |
| 27 | 8.1.3 | Build Model |  | 3d | 2021-04-27 | 2021-04-29 | 26 | 19d | 0d |  | Data Scientist | 24h | 1,440 |
| 28 | 8.1.4 | Assess Model |  | 2d | 2021-04-30 | 2021-05-03 | 27 | 19d | 0d |  | Data Scientist | 16h | 960 |
| 29 | 8.1.5 | Create graphical report |  | 3d | 2021-05-04 | 2021-05-06 | 28 | 19d | 0d |  | Data Scientist | 24h | 1,440 |
| 30 | 8.1.6 | Brand Monitoring Report created | milestone | 0d | 2021-05-06 | 2021-05-06 | 29 | 19d |  |  | Data Scientist |  |  |
| 31 | 8.2 | Brand Monitoring Model finished | milestone | 0d | 2021-04-09 | 2021-04-09 |  | 38d |  |  |  |  |  |

Notes:
- 13: Delay because of unavailability (holidays) of SysAdmin
- 16: Requirement from Spotify: Data Understanding must be done by this day

| ID | WBS | Task | Type | Duration | Start | Finish | Predecessors | Total slack | Free slack | Constraint | Resources | Work | Cost |
| --- | --- | --- | --- | --- | --- | --- | --- | --- | --- | --- | --- | --- | --- |
| 32 | 8.3 | **Create Model for Customer Support** |  | 17d | 2021-04-12 | 2021-05-04 |  | 21d | 0d |  |  | 136h | 8,160 |
| 33 | 8.3.1 | Select Modeling Techniques |  | 4d | 2021-04-12 | 2021-04-15 |  | 21d | 0d |  | Data Scientist | 32h | 1,920 |
| 34 | 8.3.2 | Generate Test Design |  | 5d | 2021-04-16 | 2021-04-22 | 33 | 21d | 0d |  | Data Scientist | 40h | 2,400 |
| 35 | 8.3.3 | Build Model |  | 3d | 2021-04-23 | 2021-04-27 | 34 | 21d | 0d |  | Data Scientist | 24h | 1,440 |
| 36 | 8.3.4 | Assess Model |  | 2d | 2021-04-28 | 2021-04-29 | 35 | 21d | 0d |  | Data Scientist | 16h | 960 |
| 37 | 8.3.5 | Create graphical report |  | 3d | 2021-04-30 | 2021-05-04 | 36 | 21d | 0d |  | Data Scientist | 24h | 1,440 |
| 38 | 8.3.6 | Customer Support Report created | milestone | 0d | 2021-05-04 | 2021-05-04 | 37 | 21d |  |  | Data Scientist |  |  |
| 39 | 8.4 | Customer Support Model finished | milestone | 0d | 2021-05-04 | 2021-05-04 | 32 | 21d |  |  |  |  |  |
| 40 | 8.5 | **Create Model for Market Research** |  | 17d | 2021-04-12 | 2021-05-04 |  | 21d |  |  |  | 136h | 8,160 |
| 41 | 8.5.1 | Select Modeling Techniques |  | 4d | 2021-04-12 | 2021-04-15 |  | 21d | 0d |  | Data Scientist | 32h | 1,920 |
| 42 | 8.5.2 | Generate Test Design |  | 5d | 2021-04-16 | 2021-04-22 | 41 | 21d | 0d |  | Data Scientist | 40h | 2,400 |
| 43 | 8.5.3 | Build Model |  | 3d | 2021-04-23 | 2021-04-27 | 42 | 21d | 0d |  | Data Scientist | 24h | 1,440 |
| 44 | 8.5.4 | Assess Model |  | 2d | 2021-04-28 | 2021-04-29 | 43 | 21d | 0d |  | Data Scientist | 16h | 960 |
| 45 | 8.5.5 | Create graphical report |  | 3d | 2021-04-30 | 2021-05-04 | 44 | 21d | 0d |  | Data Scientist | 24h | 1,440 |
| 46 | 8.5.6 | Market Research Report created | milestone | 0d | 2021-05-04 | 2021-05-04 | 45 | 21d | 0d |  | Data Scientist |  |  |
| 47 | 8.6 | Market Research Model finished | milestone | 0d | 2021-05-04 | 2021-05-04 | 46 | 21d |  |  |  |  |  |
| 48 | 9 | Modeling done | milestone | 0d | 2021-05-06 | 2021-05-06 | 23 | 38.5d |  |  |  |  |  |
| 49 | 10 | **Evaluation** |  | 9.5d | 2021-06-01 | 2021-06-15 | 23FS-3d | 0d |  | start no earlier than 2021-06-01 |  | 276h | 20,148 |
| 50 | 10.1 | Travel to Stockholm |  | 1d | 2021-06-01 | 2021-06-01 |  | 0d |  |  | Project Manager [80%]; Data Scientist [40%]; Developer [40%]; PCR Test [300%] | 12.8h | 1,282 |
| 51 | 10.2 | Evaluate Results |  | 3.5d | 2021-06-02 | 2021-06-07 | 50 | 0d |  |  | Project Manager [80%]; Data Scientist [40%]; Developer [40%]; Business Contact; Data Management Analyst; CTO | 116h | 8,240 |
| 52 | 10.3 | Review Process |  | 6d | 2021-06-07 | 2021-06-15 | 51 | 0d |  |  | Project Manager [80%]; Data Scientist [40%]; Developer [40%]; Business Contact [50%]; Data Management Analyst [50%]; CTO [50%] | 100.8h | 7,008 |
| 53 | 10.4 | Determine Next Step |  | 2d | 2021-06-09 | 2021-06-11 | 52SS+2d | 1d | 0d |  | Project Manager [80%]; Data Scientist [40%]; Developer [40%]; Business Contact [50%]; Data Management Analyst [50%]; CTO [50%] | 33.6h | 2,336 |
| 54 | 10.5 | Return to Bolzano |  | 1d | 2021-06-11 | 2021-06-14 | 53 | 1d |  |  | Project Manager [80%]; Data Scientist [40%]; Developer [40%]; PCR Test [300%] | 12.8h | 1,282 |
| 55 | 11 | Evaluation finished | milestone | 0d | 2021-06-15 | 2021-06-15 | 49 | 0d |  |  |  |  |  |

| ID | WBS | Task | Type | Duration | Start | Finish | Predecessors | Total slack | Constraint | Resources | Work | Cost |
| --- | --- | --- | --- | --- | --- | --- | --- | --- | --- | --- | --- | --- |
| 56 | 12 | **Deployment** |  | 13d | 2021-06-15 | 2021-07-02 | 55 | 0d |  |  | 296.8h | 14,120 |
| 57 | 12.1 | Plan Deployment |  | 3d | 2021-06-15 | 2021-06-18 | 23, 49 | 0d |  | Developer [200%]; System Administrator [50%] | 60h | 2,280 |
| 58 | 12.2 | Plan Monitoring and Maintenance |  | 3d | 2021-06-18 | 2021-06-23 | 57 | 0d |  | Developer [200%]; Data Scientist [50%] | 60h | 2,640 |
| 59 | 12.3 | Setup Email Server and script for sending reports |  | 1d | 2021-06-23 | 2021-06-24 | 58 | 0d |  | Developer [200%]; Data Scientist [50%] | 20h | 880 |
| 60 | 12.4 | Produce Final Reports and Documentation |  | 4d | 2021-06-24 | 2021-06-30 | 59 | 0d |  | Developer [200%]; Data Scientist [50%] | 80h | 3,520 |
| 61 | 12.5 | **Review Project** |  | 2d | 2021-06-30 | 2021-07-02 | 60 | 0d |  |  | 76.8h | 4,800 |
| 62 | 12.5.1 | Assess Improvement in User Engagement |  | 2d | 2021-06-30 | 2021-07-02 |  | 0d |  | Project Manager [20%]; Data Scientist; Business Contact [20%]; Data Management Analyst [20%] | 25.6h | 1,600 |
| 63 | 12.5.2 | Assess Satisfaction in Customer Support |  | 2d | 2021-06-30 | 2021-07-02 | 62SS | 0d |  | Project Manager [20%]; Data Scientist; Business Contact [20%]; Data Management Analyst [20%] | 25.6h | 1,600 |
| 64 | 12.5.3 | Assess Results of Market Research |  | 2d | 2021-06-30 | 2021-07-02 | 62SS | 0d |  | Project Manager [20%]; Data Scientist; Business Contact [20%]; Data Management Analyst [20%] | 25.6h | 1,600 |
| 65 | 13 | Project Deployed | milestone | 0d | 2021-07-02 | 2021-07-02 | 56 | 0d |  |  |  |  |
| 66 | 14 | Project finished | milestone | 0d | 2021-07-02 | 2021-07-02 | 65 | 0d | finish no later than 2021-07-02 |  |  |  |
| 69 | 15 | **Project Management** |  | 102.5d | 2021-02-05 | 2021-07-02 |  | 0d |  | Project Manager [20%] | 164h | 13,120 |
| 70 | 15.1 | PM Start | milestone | 0d | 2021-02-05 | 2021-02-05 | 1 | 102.5d |  |  |  |  |
| 71 | 15.2 | PM End | milestone | 0d | 2021-07-02 | 2021-07-02 | 66 | 0d |  |  |  |  |
| 75 | 16 | **License Usage** |  | 68.5d | 2021-03-24 | 2021-07-02 |  | 0d |  | Twitter API license | 492h | 24,255.71 |
| 76 | 16.1 | License Start | milestone | 0d | 2021-03-24 | 2021-03-24 | 12 | 68.5d | finish no earlier than 2021-02-05 |  |  |  |
| 77 | 16.2 | License End | milestone | 0d | 2021-07-02 | 2021-07-02 | 66 | 0d | finish no earlier than 2021-05-11 |  |  |  |

Notes:
- 77: License costs continue even after the project ends
